# SMK_Project

Schedule from MS Project, 2025-08-06 to 2026-05-29.

## Calendars

- Standard: Mon-Fri 08:00-12:00, 13:00-17:00; Sat-Sun off.

## Schedule

| ID | WBS | Task | Type | Duration | Start | Finish | Predecessors |
| --- | --- | --- | --- | --- | --- | --- | --- |
| 1 | 1 | **SMK_Performance_For_Certification (Gantt)** |  | 213d? | 2025-08-06 | 2026-05-29 |  |
| 2 | 1.1 | PACA IHD | manual | 1d | 2025-08-06 | 2025-08-06 |  |
| 3 | 1.2 | **Review of Relevant Standards & Reports** |  | 28d? | 2025-08-07 | 2025-09-15 |  |
| 4 | 1.2.1 | Review of FAA Standards & Advisory Circulars (ACs) | manual | 17d | 2025-08-07 | 2025-08-29 |  |
| 5 | 1.2.2 | Flight Log Data Analysis (v1 Verification Sorties) | manual | 6d | 2025-09-01 | 2025-09-08 |  |
| 6 | 1.2.3 | Review of Reports & Presentations (v1) | manual | 5d | 2025-09-09 | 2025-09-15 |  |
| 7 | 1.3 | **Aerodynamic Analysis** |  | 88d? | 2025-09-01 | 2025-12-31 |  |
| 8 | 1.3.1 | Review of Low-Fidelity Aerodynamic Analysis (v1 Framework) | manual | 5d | 2025-09-01 | 2025-09-05 |  |
| 9 | 1.3.2 | CFD Analysis for MSK & SMK Aircraft | manual | 50d | 2025-09-08 | 2025-11-14 | 8 |
| 10 | 1.3.3 | Verification of CFD results for MSK & SMK | manual | 26d | 2025-11-17 | 2025-12-22 |  |
| 11 | 1.3.4 | Finalized Aerodynamic Analysis Report | manual | 7d | 2025-12-23 | 2025-12-31 | 10 |
| 12 | 1.4 | **Propulsion Analysis** |  | 130d? | 2025-09-01 | 2026-02-27 |  |
| 13 | 1.4.1 | Review of SMK Engine Deck Analysis (v1) | manual | 5d | 2025-09-01 | 2025-09-05 |  |
| 14 | 1.4.2 | Analytical Evaluation of MSK Propulsive System for Engine Deck Generation | manual | 50d | 2025-09-08 | 2025-11-14 | 13 |
| 15 | 1.4.3 | Analytical Evaluation of SMK Propulsive System for Engine Deck Generation | manual | 50d | 2025-09-08 | 2025-11-14 | 13 |
| 16 | 1.4.4 | High-Fidelity Analysis of MSK Propulsive System for Refined Engine Deck Generation | manual | 65d | 2025-11-17 | 2026-02-13 | 14 |
| 17 | 1.4.5 | High-Fidelity Analysis of MSK Propulsive System for Refined Engine Deck Generation | manual | 65d | 2025-11-17 | 2026-02-13 |  |
| 18 | 1.4.6 | Finalized Propulsion Analysis Report | manual | 10d | 2026-02-16 | 2026-02-27 | 14, 15, 16, 17 |
| 19 | 1.5 | **Performance Analysis** |  | 184d? | 2025-09-16 | 2026-05-29 |  |
| 20 | 1.5.1 | Review of v1 Performance Analysis Framework | manual | 11d | 2025-09-16 | 2025-09-30 |  |
| 21 | 1.5.2 | Development of v2 Performance Analysis Framework | manual | 141d | 2025-10-01 | 2026-04-15 |  |
| 22 | 1.5.3 | Verification of v2 Framework with MSK TO-1T-17-1 | manual | 131d | 2025-10-15 | 2026-04-15 |  |
| 23 | 1.5.4 | Generation of SMK Performance Charts using v2 Framework | manual | 22d | 2026-04-16 | 2026-05-15 | 21, 22 |
| 24 | 1.5.5 | Finalized Performance Report and POH Charts | manual | 10d | 2026-05-18 | 2026-05-29 | 21, 22, 23 |
